# lab2upsis

Schedule from ProjectLibre, 2026-02-02 to 2026-11-03.

## Calendars

- Пятидневка: Mon-Fri 08:00-12:00, 13:00-17:00; Sat-Sun off.

## Resources

| Resource | Rate |
| --- | --- |
| Не назначено |  |
| Тимлид | 1250 |
| Системный аналитик | 625 |
| Архитектор | 570 |
| Data Scientist | 875 |
| Frontend-разработчик | 1100 |
| DevOps | 670 |
| QA-инженер | 713 |

## Schedule

| ID | WBS | Task | Type | Duration | Start | Finish | Predecessors | Complete | Constraint | Resources |
| --- | --- | --- | --- | --- | --- | --- | --- | --- | --- | --- |
| 1 | 1 | **Управление проектом** |  | 15d | 2026-02-02 | 2026-02-20 |  | 100% |  |  |
| 2 | 1.1 | Планирование и координация команды |  | 0d | 2026-02-02 | 2026-02-02 | 6SS, 27FF | 100% | start no later than 2026-09-01 | Тимлид |
| 3 | 1.2 | Управление рисками и коммуникация с заказчиками |  | 10d | 2026-02-09 | 2026-02-20 | 2SS | 100% |  | Тимлид |
| 4 | 1.3 | Подготовка отчетной документации |  | 3d | 2026-02-16 | 2026-02-18 | 8, 10FF, 15FF, 25SF | 100% |  | Тимлид |
| 5 | 2 | **Анализ и обследование** |  | 17d | 2026-02-23 | 2026-03-17 |  | 91% |  |  |
| 6 | 2.1 | Изучение производственных и логистических процессов |  | 17d | 2026-02-23 | 2026-03-17 |  | 100% |  | Системный аналитик |
| 7 | 2.2 | Сбор требований к функционалу |  | 5d | 2026-02-23 | 2026-02-27 | 6SS+2d | 50% |  | Системный аналитик |
| 8 | 2.3 | Формирование технического задания (ТЗ) |  | 5d | 2026-02-23 | 2026-02-27 | 6, 7SS+3d | 100% |  | Системный аналитик |
| 9 | 3 | ТЗ Утверждено | milestone | 17d | 2026-02-23 | 2026-03-17 | 8 | 88% |  |  |
| 10 | 4 | **Проектирование** |  | 136d | 2026-02-23 | 2026-09-01 |  | 100% |  |  |
| 11 | 4.1 | Проектирование архитектуры и интеграционного слоя |  | 10d | 2026-03-06 | 2026-03-19 | 8 | 100% |  | Архитектор |
| 12 | 4.2 | Проектирование экономической модели |  | 0d | 2026-02-23 | 2026-02-23 | 8 | 100% |  | Системный аналитик [200%] |
| 13 | 4.3 | Разработка математических моделей оптимизации |  | 10d | 2026-03-06 | 2026-03-19 | 8 | 100% |  | Data Scientist |
| 14 | 4.4 | Проектирование завершено |  | 0d | 2026-02-23 | 2026-09-01 | 11, 12, 13 |  |  |  |
| 15 | 5 | **Разработка и интеграция** |  | 38d | 2026-02-23 | 2026-04-15 |  | 100% |  |  |
| 16 | 5.1 | Разработка интеграционного слоя |  | 25d | 2026-02-23 | 2026-03-27 | 11 | 100% |  | Архитектор |
| 17 | 5.2 | Разработка слоя хранения данных (MDM/DWH) |  | 15d | 2026-02-23 | 2026-03-13 | 13, 11, 12 | 100% |  | Архитектор |
| 18 | 5.3 | Реализация модуля экономической модели |  | 15d | 2026-03-02 | 2026-03-20 | 17, 12 | 100% |  | Архитектор |
| 19 | 5.4 | Реализация модуля ИИ-планирования (сценарии) |  | 25d | 2026-03-09 | 2026-04-10 | 17SS+3d, 13SS+3d | 100% |  | Data Scientist |
| 20 | 5.5 | Разработка веб-интерфейсов и панелей |  | 23d | 2026-03-16 | 2026-04-15 | 19, 18 | 100% |  | Frontend-разработчик |
| 21 | 5.6 | MVP завершен |  | 0d | 2026-03-23 | 2026-03-23 | 16, 17, 18, 19, 20 | 100% |  |  |
| 22 | 6 | **Тестирование и внедрение** |  | 38d | 2026-09-01 | 2026-10-22 |  |  |  |  |
| 23 | 6.1 | Настройка тестовых сред (инфраструктура) |  | 8d | 2026-09-01 | 2026-09-10 | 11 |  |  | DevOps |
| 24 | 6.2 | Функциональное и интеграционное тестирование |  | 20d | 2026-09-11 | 2026-10-08 | 23, 20, 16, 17, 18, 19 |  |  | QA-инженер |
| 25 | 6.3 | Развертывание системы (пилотные внедрения) |  | 10d | 2026-10-09 | 2026-10-22 | 24 |  |  | DevOps |
| 26 | 6.4 | Пилот запущен |  | 0d | 2026-10-22 | 2026-10-22 | 25 |  |  |  |
| 27 | 7 | Буферная работа (непредвиденные сбои на пилотах) |  | 8d | 2026-10-23 | 2026-11-03 | 25 |  |  | DevOps |
| 28 | 8 | Пилот завершен |  | 0d | 2026-11-03 | 2026-11-03 | 27 |  |  |  |
